# Exhibit 8

Schedule from MS Project, 2003-05-26 to 2005-06-14, costs in $.

## Calendars

- Standard: Mon-Fri 08:00-12:00, 13:00-17:00; Sat-Sun off.

## Resources

| Resource | Rate |
| --- | --- |
| Chris Johnson (Project Manager) | 75 |
| Ryan Neff (Functional Lead) | 75 |
| Stacy Lyle ( Functional Analyst) | 75 |
| Rick Burke (Infrastructure Lead) | 75 |
| Marc Sanders (Development Lead) | 75 |
| Developer 1 (TBD) | 165 |
| Sanjay Vohra (DBA) | 75 |
| Kara Siposki (Test Lead) | 75 |
| Todd Eliason (Tester) | 75 |
| Developer 2 (TBD) | 175 |
| Developer 3 (TBD) | 175 |

## Schedule

| ID | WBS | Task | Duration | Start | Finish | Predecessors | Total slack | Free slack | Resources | Work | Cost |
| --- | --- | --- | --- | --- | --- | --- | --- | --- | --- | --- | --- |
| 1 | 1 | **Overall Project** | 517d | 2003-05-26 | 2005-05-17 |  |  |  |  | 34959h | 3,748,282 |
| 2 | 1.1 | **Project Management** | 127d | 2003-05-26 | 2003-11-18 |  | 410d |  |  | 1016h | 76,200 |
| 3 | 1.1.1 | Manage Project | 127d | 2003-05-26 | 2003-11-18 | 59FF | 410d |  | Chris Johnson (Project Manager) | 1016h | 76,200 |
| 4 | 1.2 | **System Requirements** | 29d | 2003-05-26 | 2003-07-03 |  | 3d |  |  | 616h | 46,200 |
| 5 | 1.2.1 | Gather Business Requirements | 8d | 2003-05-26 | 2003-06-04 |  | 3d | 0d | Ryan Neff (Functional Lead); Stacy Lyle ( Functional Analyst) | 128h | 9,600 |
| 6 | 1.2.2 | Design Business Process Flows | 4d | 2003-06-05 | 2003-06-10 | 5 | 3d | 0d | Ryan Neff (Functional Lead); Stacy Lyle ( Functional Analyst) | 64h | 4,800 |
| 7 | 1.2.3 | Finalize Technical Requirements | 6d | 2003-05-26 | 2003-06-02 |  | 529d | 21d | Rick Burke (Infrastructure Lead) | 48h | 3,600 |
| 8 | 1.2.4 | Create Operational Requirements | 15d | 2003-06-11 | 2003-07-01 | 5, 6 | 3d | 0d | Ryan Neff (Functional Lead); Stacy Lyle ( Functional Analyst); Rick Burke (Infrastructure Lead) | 360h | 27,000 |
| 9 | 1.2.5 | Identify Technical Infrastructure Needs | 2d | 2003-07-02 | 2003-07-03 | 7, 8 | 508d |  | Rick Burke (Infrastructure Lead) | 16h | 1,200 |
| 10 | 1.3 | **Software Requirements** | 19d | 2003-07-02 | 2003-07-28 |  | 3d |  |  | 320h | 24,000 |
| 11 | 1.3.1 | **Create Functional Requiremnets** | 19d | 2003-07-02 | 2003-07-28 | 5, 6, 8 | 0d |  |  | 208h | 15,600 |
| 12 | 1.3.1.1 | Capture Customer Profile | 4d | 2003-07-02 | 2003-07-07 |  | 8d | 5d | Ryan Neff (Functional Lead) | 32h | 2,400 |
| 13 | 1.3.1.2 | View and Search Product Catalog | 6d | 2003-07-07 | 2003-07-14 |  | 0d |  | Ryan Neff (Functional Lead) | 48h | 3,600 |
| 14 | 1.3.1.3 | Updating and Calculating Shopping Cart | 3d | 2003-07-15 | 2003-07-17 | 13 | 0d |  | Ryan Neff (Functional Lead) | 24h | 1,800 |
| 15 | 1.3.1.4 | Taking Payments | 6d | 2003-07-08 | 2003-07-15 |  | 2d |  | Stacy Lyle ( Functional Analyst) | 48h | 3,600 |
| 16 | 1.3.1.5 | Submit Order | 4d | 2003-07-18 | 2003-07-23 | 12, 13, 14, 15 | 0d |  | Ryan Neff (Functional Lead) | 32h | 2,400 |
| 17 | 1.3.1.6 | Check Order History & Order Status | 3d | 2003-07-24 | 2003-07-28 | 16 | 0d |  | Ryan Neff (Functional Lead) | 24h | 1,800 |
| 18 | 1.3.2 | Create Data Requirements | 3d | 2003-07-15 | 2003-07-17 | 12, 13 | 498d |  | Stacy Lyle ( Functional Analyst) | 24h | 1,800 |
| 19 | 1.3.3 | Create ERP Interface Requirements | 7d | 2003-07-18 | 2003-07-28 | 16SS | 491d |  | Stacy Lyle ( Functional Analyst) | 56h | 4,200 |
| 20 | 1.3.4 | Create User Interface Requirements | 4d | 2003-07-02 | 2003-07-07 | 11SS | 506d |  | Stacy Lyle ( Functional Analyst) | 32h | 2,400 |
| 21 | 1.4 | **Detailed Design** | 39.5d | 2003-05-26 | 2003-07-18 |  | 37.5d | 0d |  | 1444h | 136,740 |
| 22 | 1.4.1 | Design Capture Customer Profile Pages & Components | 13.5d | 2003-05-26 | 2003-06-12 |  | 43.5d | 6d | Marc Sanders (Development Lead); Ryan Neff (Functional Lead) [50%] | 162h | 12,150 |
| 23 | 1.4.2 | Design View and Search Product Catalog Pages & Components | 13.5d | 2003-05-26 | 2003-06-12 |  | 37.5d | 0d | Developer 1 (TBD); Ryan Neff (Functional Lead) [50%] | 162h | 21,870 |
| 24 | 1.4.3 | Design Updating and Calculating Shopping Cart | 6d | 2003-06-12 | 2003-06-20 | 23 | 37.5d | 0d | Developer 1 (TBD); Ryan Neff (Functional Lead) | 96h | 11,520 |
| 25 | 1.4.4 | Design Taking Payments Pages & Components | 6d | 2003-05-26 | 2003-06-02 |  | 51d | 13.5d | Marc Sanders (Development Lead); Stacy Lyle ( Functional Analyst) | 96h | 7,200 |
| 26 | 1.4.5 | Design Submit Order Pages & Components | 16d | 2003-06-20 | 2003-07-14 | 22, 23, 24, 25 | 37.5d | 0d | Marc Sanders (Development Lead); Ryan Neff (Functional Lead) | 256h | 19,200 |
| 27 | 1.4.6 | Design Check Order History & Order Status Pages & Components | 4d | 2003-07-14 | 2003-07-18 | 26 | 37.5d | 0d | Marc Sanders (Development Lead); Ryan Neff (Functional Lead) | 64h | 4,800 |
| 28 | 1.4.7 | Design Logical & Physical Data Model | 18d | 2003-05-26 | 2003-06-18 |  | 59d | 2d | Sanjay Vohra (DBA); Stacy Lyle ( Functional Analyst) | 288h | 21,600 |
| 29 | 1.4.8 | Design ERP Interface | 20d | 2003-06-20 | 2003-07-18 | 22, 23, 24, 25 | 37.5d | 0d | Developer 1 (TBD); Stacy Lyle ( Functional Analyst) | 320h | 38,400 |

| ID | WBS | Task | Duration | Start | Finish | Predecessors | Total slack | Free slack | Resources | Work | Cost |
| --- | --- | --- | --- | --- | --- | --- | --- | --- | --- | --- | --- |
| 30 | 1.5 | **Test Planning** | 56d | 2003-08-21 | 2003-11-06 |  | 0d |  |  | 896h | 67,200 |
| 31 | 1.5.1 | Gather Testing Requirements | 14d | 2003-08-21 | 2003-09-09 | 11 | 0d |  | Kara Siposki (Test Lead); Todd Eliason (Tester) | 224h | 16,800 |
| 32 | 1.5.2 | Create System Test Plan & Test Cases | 20d | 2003-09-10 | 2003-10-07 | 31, 21 | 0d |  | Kara Siposki (Test Lead); Todd Eliason (Tester) | 320h | 24,000 |
| 33 | 1.5.3 | Write System Test Script | 22d | 2003-10-08 | 2003-11-06 | 32 | 0d |  | Kara Siposki (Test Lead); Todd Eliason (Tester) | 352h | 26,400 |
| 34 | 1.6 | **Technical Infrastructure** | 100.2d | 2003-05-26 | 2003-10-13 |  | 36d |  |  | 780.96h | 58,572 |
| 35 | 1.6.1 | Create Development Environment | 20d | 2003-05-26 | 2003-06-20 |  | 36d | 0d | Rick Burke (Infrastructure Lead) | 160h | 12,000 |
| 36 | 1.6.2 | Create Testing Environment | 34.2d | 2003-06-23 | 2003-08-08 | 35 | 436.8d | 0d | Rick Burke (Infrastructure Lead) [90%] | 246.24h | 18,468 |
| 37 | 1.6.3 | Support Development Environment | 3.8d | 2003-06-23 | 2003-06-26 | 35 | 513.2d |  | Rick Burke (Infrastructure Lead) [10%] | 3.04h | 228 |
| 38 | 1.6.4 | Support Testing Environment & Deployment | 46d | 2003-08-08 | 2003-10-13 | 36 | 436.8d |  | Rick Burke (Infrastructure Lead) | 368h | 27,600 |
| 39 | 1.6.5 | Support Database | 4.6d | 2003-07-14 | 2003-07-21 | 47 | 496.9d |  | Sanjay Vohra (DBA) [10%] | 3.68h | 276 |
| 40 | 1.7 | **Development & Unit Test** | 65.5d | 2003-06-23 | 2003-09-22 | 35 | 36d |  |  | 1678h | 207,610 |
| 41 | 1.7.1 | Build Capture Customer Profile Pages & Components | 13d | 2003-06-23 | 2003-07-09 | 22 | 42d | 6d | Developer 2 (TBD) | 104h | 18,200 |
| 42 | 1.7.2 | Build View and Search Product Catalog Pages & Components | 12d | 2003-06-23 | 2003-07-08 | 23 | 36d | 0d | Developer 3 (TBD) | 96h | 16,800 |
| 43 | 1.7.3 | Build Updating and Calculating Shopping Cart | 7d | 2003-07-09 | 2003-07-17 | 24, 42 | 36d | 0d | Developer 3 (TBD) | 56h | 9,800 |
| 44 | 1.7.4 | Build Taking Payments Pages & Components | 6d | 2003-06-23 | 2003-06-30 | 25 | 49d | 13d | Developer 2 (TBD) | 48h | 8,400 |
| 45 | 1.7.5 | Build Submit Order Pages & Components | 24d | 2003-07-18 | 2003-08-20 | 26, 41, 42, 43, 44 | 36d | 26d | Developer 2 (TBD); Developer 3 (TBD) | 384h | 67,200 |
| 46 | 1.7.6 | Build Check Order History & Order Status Pages & Components | 6d | 2003-07-18 | 2003-07-28 | 27 | 53.5d | 43.5d | Marc Sanders (Development Lead) | 48h | 3,600 |
| 47 | 1.7.7 | Build Logical & Physical Data Model | 15.5d | 2003-06-23 | 2003-07-14 | 28 | 63.5d | 0d | Sanjay Vohra (DBA) [50%] | 62h | 4,650 |
| 48 | 1.7.8 | Build ERP Interface | 18d | 2003-07-18 | 2003-08-13 | 29 | 41.5d | 31.5d | Developer 1 (TBD) | 144h | 23,760 |
| 49 | 1.7.9 | Support Developments & Assembly Test | 46d | 2003-07-18 | 2003-09-22 | 21 | 451.5d |  | Ryan Neff (Functional Lead); Stacy Lyle ( Functional Analyst) | 736h | 55,200 |
| 50 | 1.8 | **Testing** | 282d | 2003-09-10 | 2004-10-07 |  | 0d |  |  | 16096h | 1,810,400 |
| 51 | 1.8.1 | **Perform Assembly Testing** | 32d | 2003-09-10 | 2003-10-23 | 31 | 10d |  |  | 736h | 101,600 |
| 52 | 1.8.1.1 | Perform Phase 1 Testing | 12d | 2003-09-10 | 2003-09-25 | 41, 42, 43 | 10d | 0d | Marc Sanders (Development Lead) | 96h | 7,200 |
| 53 | 1.8.1.2 | Perform Phase 2 Testing | 20d | 2003-09-26 | 2003-10-23 | 44, 45, 46, 52, 47, 48 | 10d |  | Developer 1 (TBD); Developer 2 (TBD); Developer 3 (TBD); Marc Sanders (Development Lead) | 640h | 94,400 |
| 54 | 1.8.2 | Perform System Testing | 160d | 2003-11-07 | 2004-06-17 | 51, 32, 33 | 0d |  | Developer 1 (TBD); Developer 2 (TBD); Developer 3 (TBD); Kara Siposki (Test Lead); Marc Sanders (Development Lead); Ryan Neff (Functional Lead); Stacy Lyle ( Functional Analyst); Todd Eliason (Tester) | 10240h | 1,139,200 |
| 55 | 1.8.3 | Perform Validation Testing | 80d | 2004-06-18 | 2004-10-07 | 54 | 0d |  | Developer 1 (TBD); Developer 2 (TBD); Developer 3 (TBD); Kara Siposki (Test Lead); Marc Sanders (Development Lead); Ryan Neff (Functional Lead); Stacy Lyle ( Functional Analyst); Todd Eliason (Tester) | 5120h | 569,600 |

| ID | WBS | Task | Duration | Start | Finish | Predecessors | Total slack | Resources | Work | Cost |
| --- | --- | --- | --- | --- | --- | --- | --- | --- | --- | --- |
| 56 | 1.9 | **Deployment** | 178d | 2004-10-08 | 2005-06-14 |  | 0d |  | 12112h | 1,321,360 |
| 57 | 1.9.1 | Implementing System | 80d | 2004-10-08 | 2005-01-27 | 50 | 0d | Developer 1 (TBD); Developer 2 (TBD); Developer 3 (TBD); Kara Siposki (Test Lead); Marc Sanders (Development Lead); Ryan Neff (Functional Lead); Stacy Lyle ( Functional Analyst); Todd Eliason (Tester) | 5120h | 569,600 |
| 58 | 1.9.2 | Deploy To Production | 8d | 2005-01-28 | 2005-02-08 | 57 | 0d | Developer 1 (TBD); Developer 2 (TBD); Developer 3 (TBD); Kara Siposki (Test Lead); Marc Sanders (Development Lead); Ryan Neff (Functional Lead); Stacy Lyle ( Functional Analyst); Todd Eliason (Tester) | 512h | 56,960 |
| 59 | 1.9.3 | Project Wrap-Up | 90d | 2005-02-09 | 2005-06-14 | 58 | 0d | Developer 1 (TBD); Developer 2 (TBD); Developer 3 (TBD); Kara Siposki (Test Lead); Marc Sanders (Development Lead); Rick Burke (Infrastructure Lead); Ryan Neff (Functional Lead); Stacy Lyle ( Functional Analyst); Todd Eliason (Tester) | 6480h | 694,800 |
